# 北斗天工

Schedule from MS Project, 2016-03-31 to 2016-06-30.

## Calendars

- 标准: Mon-Fri 08:00-12:00, 13:00-17:00; Sat-Sun off.

## Resources

| Resource |
| --- |
| 张剑锋 |
| 王诚 |
| 蒋丹 |
| 王伟航 |
| 徐伟红 |
| 外包 |

## Schedule

| ID | WBS | Task | Type | Duration | Start | Finish | Predecessors | Total slack | Resources | Work |
| --- | --- | --- | --- | --- | --- | --- | --- | --- | --- | --- |
| 1 | 1 | **前期准备** |  | 3d | 2016-03-31 | 2016-04-04 |  | 0d |  | 40h |
| 2 | 1.1 | 后台框架整理 | manual | 2d | 2016-03-31 | 2016-04-01 |  |  | 王诚 | 16h |
| 3 | 1.2 | 前端框架整理 | manual | 3d | 2016-03-31 | 2016-04-04 |  |  | 王诚 | 24h |
| 4 | 2 | **第一阶段开发** |  | 45d | 2016-04-05 | 2016-06-05 |  |  |  | 896h |
| 5 | 2.1 | **设计** |  | 11d | 2016-04-05 | 2016-04-19 |  | 0d |  | 120h |
| 6 | 2.1.1 | 会员注册登录、审核流程设计 | manual | 3d | 2016-04-05 | 2016-04-07 |  |  | 蒋丹 | 24h |
| 7 | 2.1.2 | 会员充值提现流程 | manual | 3d | 2016-04-05 | 2016-04-07 |  |  | 王伟航 | 24h |
| 8 | 2.1.3 | 消息通知 | manual | 3d | 2016-04-11 | 2016-04-13 |  |  | 王诚 | 24h |
| 9 | 2.1.4 | 全局配置 | manual | 3d | 2016-04-05 | 2016-04-07 |  |  |  |  |
| 10 | 2.1.5 | 任务发布流程 | manual | 2d | 2016-04-08 | 2016-04-11 |  |  | 徐伟红 | 16h |
| 11 | 2.1.6 | 任务进行流程 | manual | 3d | 2016-04-12 | 2016-04-14 |  |  | 徐伟红 | 24h |
| 12 | 2.1.7 | 店铺管理 | manual | 1d | 2016-04-19 | 2016-04-19 |  |  | 王伟航 | 8h |
| 13 | 2.1.8 | 会员评价及等级 | manual | 2d | 2016-04-18 | 2016-04-19 |  |  |  |  |
| 14 | 2.2 | **单点登录** |  | 4d? | 2016-04-05 | 2016-04-08 |  | 0d |  | 64h |
| 15 | 2.2.1 | 会员登录 | manual | 4d | 2016-04-05 | 2016-04-08 |  |  | 王诚 | 32h |
| 16 | 2.2.2 | 第三方登录 | manual | 4d | 2016-04-05 | 2016-04-08 |  |  | 王诚 | 32h |
| 17 | 2.2.3 | 整合论坛 | manual | 1d? | 2016-04-05 | 2016-04-05 |  |  |  |  |
| 18 | 2.3 | **门户** |  | 17d? | 2016-04-05 | 2016-04-27 |  | 0d |  | 288h |
| 19 | 2.3.1 | **网站静态页** |  | 2d? | 2016-04-05 | 2016-04-06 |  | 0d |  |  |
| 20 | 2.3.1.1 | 登录页 | manual | 2d | 2016-04-05 | 2016-04-06 |  |  |  |  |
| 21 | 2.3.1.2 | 会员中心页 | manual | 2d | 2016-04-05 | 2016-04-06 |  |  |  |  |
| 22 | 2.3.1.3 | 门户首页 | manual | 1d? | 2016-04-05 | 2016-04-05 |  |  |  |  |
| 23 | 2.3.1.4 | 任务大厅及任务页 | manual | 1d? | 2016-04-05 | 2016-04-05 |  |  |  |  |
| 24 | 2.3.2 | **会员功能** |  | 8d | 2016-04-07 | 2016-04-18 | 6 | 0d |  | 64h |
| 25 | 2.3.2.1 | 会员注册 | manual | 2d | 2016-04-07 | 2016-04-08 |  |  | 蒋丹 | 16h |
| 26 | 2.3.2.2 | 会员信息完善 | manual | 2d | 2016-04-11 | 2016-04-12 |  |  | 蒋丹 | 16h |
| 27 | 2.3.2.3 | 会员身份认证 | manual | 2d | 2016-04-13 | 2016-04-14 |  |  | 蒋丹 | 16h |
| 28 | 2.3.2.4 | 会员资质认证 | manual | 2d | 2016-04-15 | 2016-04-18 |  |  | 蒋丹 | 16h |
| 29 | 2.3.3 | 店铺管理 | manual | 3d | 2016-04-20 | 2016-04-22 |  |  | 王伟航 | 24h |

| ID | WBS | Task | Type | Duration | Start | Finish | Predecessors | Total slack | Resources | Work |
| --- | --- | --- | --- | --- | --- | --- | --- | --- | --- | --- |
| 30 | 2.3.4 | **任务管理** |  | 9d | 2016-04-15 | 2016-04-27 |  | 0d |  | 72h |
| 31 | 2.3.4.1 | 任务大厅 | manual | 2d | 2016-04-15 | 2016-04-18 |  |  | 徐伟红 | 16h |
| 32 | 2.3.4.2 | 任务发布 | manual | 3d | 2016-04-19 | 2016-04-21 |  |  | 徐伟红 | 24h |
| 33 | 2.3.4.3 | 任务进行 | manual | 4d | 2016-04-22 | 2016-04-27 |  |  | 徐伟红 | 32h |
| 34 | 2.3.5 | **财务管理** |  | 8d? | 2016-04-07 | 2016-04-18 | 7 | 0d | 王伟航 | 128h |
| 35 | 2.3.5.1 | 线下充值 | manual | 3d | 2016-04-07 | 2016-04-11 |  |  | 王伟航 | 24h |
| 36 | 2.3.5.2 | 提现 | manual | 3d | 2016-04-12 | 2016-04-14 |  |  | 王伟航 | 24h |
| 37 | 2.3.5.3 | 线上充值 | manual | 1d? | 2016-04-07 | 2016-04-07 |  |  |  |  |
| 38 | 2.3.5.4 | 收支明细 | manual | 2d | 2016-04-15 | 2016-04-18 |  |  | 王伟航 | 16h |
| 39 | 2.3.6 | 专家库 | manual | 1d? | 2016-04-05 | 2016-04-05 |  |  |  |  |
| 40 | 2.4 | **后台应用支撑** |  | 12d? | 2016-04-05 | 2016-04-20 |  | 0d |  | 208h |
| 41 | 2.4.1 | **会员管理** |  | 8d? | 2016-04-07 | 2016-04-18 | 6 | 0d |  | 48h |
| 42 | 2.4.1.1 | 会员管理 | manual | 2d | 2016-04-07 | 2016-04-08 |  |  | 蒋丹 | 16h |
| 43 | 2.4.1.2 | 会员身份认证审核 | manual | 2d | 2016-04-13 | 2016-04-14 |  |  | 蒋丹 | 16h |
| 44 | 2.4.1.3 | 会员资质认证审核 | manual | 2d | 2016-04-15 | 2016-04-18 |  |  | 蒋丹 | 16h |
| 45 | 2.4.1.4 | 会员等级 | manual | 1d? | 2016-04-07 | 2016-04-07 |  |  |  |  |
| 46 | 2.4.1.5 | 会员评价 | manual | 1d? | 2016-04-07 | 2016-04-07 |  |  |  |  |
| 47 | 2.4.1.6 | 交易维权 | manual | 1d? | 2016-04-07 | 2016-04-07 |  |  |  |  |
| 48 | 2.4.2 | **内容管理** |  | 4d? | 2016-04-05 | 2016-04-08 |  | 0d |  | 32h |
| 49 | 2.4.2.1 | 资讯管理 | manual | 4d | 2016-04-05 | 2016-04-08 |  |  | 张剑锋 | 32h |
| 50 | 2.4.2.2 | 成功案例 | manual | 1d? | 2016-04-05 | 2016-04-05 |  |  |  |  |
| 51 | 2.4.3 | **任务管理** |  | 4d | 2016-04-15 | 2016-04-20 |  | 0d |  | 32h |
| 52 | 2.4.3.1 | 任务管理 | manual | 2d | 2016-04-15 | 2016-04-18 |  |  | 徐伟红 | 16h |
| 53 | 2.4.3.2 | 任务配置 | manual | 1d | 2016-04-19 | 2016-04-19 |  |  | 徐伟红 | 8h |
| 54 | 2.4.3.3 | 任务审核 | manual | 1d | 2016-04-20 | 2016-04-20 |  |  | 徐伟红 | 8h |

| ID | WBS | Task | Type | Duration | Start | Finish | Predecessors | Total slack | Resources | Work |
| --- | --- | --- | --- | --- | --- | --- | --- | --- | --- | --- |
| 55 | 2.4.4 | **财务管理** |  | 6d | 2016-04-07 | 2016-04-14 | 7 | 0d | 王伟航 | 96h |
| 56 | 2.4.4.1 | 充值审核 | manual | 3d | 2016-04-07 | 2016-04-11 |  |  | 王伟航 | 24h |
| 57 | 2.4.4.2 | 提现审核 | manual | 3d | 2016-04-12 | 2016-04-14 |  |  | 王伟航 | 24h |
| 58 | 2.4.5 | 专家库管理 | manual | 1d? | 2016-04-05 | 2016-04-05 |  |  |  |  |
| 59 | 2.4.6 | 爬取项目信息管理 | manual | 1d? | 2016-04-05 | 2016-04-05 |  |  |  |  |
| 60 | 2.5 | **作业系统** |  | 19d | 2016-04-05 | 2016-04-29 |  | 0d |  | 216h |
| 61 | 2.5.1 | 开发 | manual | 15d | 2016-04-05 | 2016-04-25 |  |  | 外包 | 120h |
| 62 | 2.5.2 | **整合** |  | 4d | 2016-04-26 | 2016-04-29 | 61 | 0d |  | 96h |
| 63 | 2.5.2.1 | 接入单点登录 | manual | 4d | 2016-04-26 | 2016-04-29 |  |  | 王诚 | 32h |
| 64 | 2.5.2.2 | 流程信息查看接入 | manual | 4d | 2016-04-26 | 2016-04-29 |  |  | 王诚 | 32h |
| 65 | 2.5.2.3 | 流程整合 | manual | 4d | 2016-04-26 | 2016-04-29 |  |  | 徐伟红 | 32h |
| 66 | 2.6 | 手机APP | manual | 1d? | 2016-04-05 | 2016-04-05 |  |  |  |  |
| 67 | 2.7 | **测试** |  | 1d? | 2016-04-20 | 2016-04-20 |  |  |  |  |
| 68 | 2.7.1 | 会员注册登录、资料完善、资质审核流程 | manual | 3d | 2016-04-20 | 2016-04-22 |  |  |  |  |
| 69 | 2.7.2 | 会员充值提现流程 | manual | 3d | 2016-04-20 | 2016-04-22 |  |  |  |  |
| 70 | 2.7.3 | 任务发布流程 | manual | 1d? | 2016-04-20 | 2016-04-20 |  |  |  |  |
| 71 | 2.7.4 | 任务进行流程 | manual | 1d? | 2016-04-20 | 2016-04-20 |  |  |  |  |
| 72 | 2.8 | 发布 | manual | 1d? | 2016-04-05 | 2016-04-05 |  |  |  |  |
| 73 | 3 | 内测上线 | manual | 19d | 2016-06-06 | 2016-06-30 |  |  |  |  |
